# DFS人力资源系统重构项目

Schedule from a web Gantt chart, 2024-07-01 to 2026-06-30.
Saturdays and Sundays are off

## Schedule

| ID | WBS | Task | Type | Duration | Start | Finish | Complete | inPeople |
| --- | --- | --- | --- | --- | --- | --- | --- | --- |
| 2 | 1 | **项目准备阶段** |  | 23d | 2024-07-01 | 2024-07-31 | 9% |  |
| 3 | 1.1 | **商务准备** |  | 23d | 2024-07-01 | 2024-07-31 |  |  |
| 4 | 1.1.1 | 技术协议书编写 |  | 5d | 2024-07-01 | 2024-07-05 |  | 陶智、顾恒琪 |
| 5 | 1.1.2 | 合同签署确认 | fixed end | 23d | 2024-07-01 | 2024-07-31 |  | 联友、盖雅 |
| 6 | 1.2 | **建立项目组工作环境** |  | 3d | 2024-07-01 | 2024-07-03 | 100% |  |
| 7 | 1.2.1 | 办公室和会议室 |  | 1d | 2024-07-01 | 2024-07-01 | 100% | 陶智 |
| 8 | 1.2.2 | 门禁、网络、通讯工具、饭卡、SVN |  | 3d | 2024-07-01 | 2024-07-03 | 100% | 陶智 |
| 9 | 1.2.3 | 其他办公设备和后勤保障（打印等） |  | 3d | 2024-07-01 | 2024-07-03 | 100% | 陶智 |
| 10 | 1.3 | **确定项目组机构** |  | 20d | 2024-07-01 | 2024-07-26 |  |  |
| 11 | 1.3.1 | 东风南方项目组织架构搭建 |  | 5d | 2024-07-01 | 2024-07-05 |  | 丁敏、顾恒琪 |
| 12 | 1.3.2 | 盖雅项目组织架构搭建 |  | 5d | 2024-07-01 | 2024-07-05 |  | 丁敏、顾恒琪 |
| 13 | 1.3.3 | 东风南方项目组成员和关键用户确认 |  | 15d | 2024-07-08 | 2024-07-26 |  | 丁敏、顾恒琪 |
| 14 | 1.3.4 | 盖雅项目组成员确认 |  | 15d | 2024-07-08 | 2024-07-26 |  | 丁敏、顾恒琪 |
| 15 | 2 | **项目启动阶段** |  | 65d | 2024-07-01 | 2024-09-27 |  |  |
| 16 | 2.1 | **项目章程编写** |  | 5d | 2024-07-01 | 2024-07-05 |  |  |
| 17 | 2.1.1 | 制定项目管理的标准与规范 |  | 5d | 2024-07-01 | 2024-07-05 |  | 顾恒琪、熊江红 |
| 18 | 2.1.2 | 确定项目沟通交流策略及计划 |  | 5d | 2024-07-01 | 2024-07-05 |  | 顾恒琪、熊江红 |
| 19 | 2.1.3 | 项目实施方法及管理方案 |  | 5d | 2024-07-01 | 2024-07-05 |  | 顾恒琪、熊江红 |
| 20 | 2.1.4 | 定义项目文件管理方法 |  | 5d | 2024-07-01 | 2024-07-05 |  | 顾恒琪、熊江红 |
| 21 | 2.1.5 | 项目问题管理方案 |  | 5d | 2024-07-01 | 2024-07-05 |  | 顾恒琪、熊江红 |
| 22 | 2.2 | **实施计划编写** |  | 10d | 2024-07-01 | 2024-07-12 |  |  |
| 23 | 2.2.1 | 定义项目实施目标 |  | 5d | 2024-07-08 | 2024-07-12 |  | 丁敏、顾恒琪 |
| 24 | 2.2.2 | 确定项目实施策略及方法 |  | 5d | 2024-07-08 | 2024-07-12 |  | 丁敏、顾恒琪 |
| 25 | 2.2.3 | 制定并完善项目工作计划 |  | 10d | 2024-07-01 | 2024-07-12 |  | 顾恒琪 |

| ID | WBS | Task | Type | Duration | Start | Finish | inPeople |
| --- | --- | --- | --- | --- | --- | --- | --- |
| 26 | 2.3 | **项目启动会** |  | 30d | 2024-07-15 | 2024-08-23 |  |
| 27 | 2.3.1 | 启动会材料准备 |  | 10d | 2024-07-15 | 2024-07-26 | 顾恒琪、熊江红 |
| 28 | 2.3.2 | 项目启动会 | fixed end | 5d | 2024-08-19 | 2024-08-23 | DFS、盖雅 |
| 29 | 2.4 | **管理层汇报及沟通** |  | 15d | 2024-07-29 | 2024-08-16 |  |
| 30 | 2.4.1 | 人力资源部领导汇报 |  | 5d | 2024-07-29 | 2024-08-02 |  |
| 31 | 2.4.2 | 高层访谈和愿景研讨 |  | 5d | 2024-08-12 | 2024-08-16 |  |
| 32 | 2.5 | **业务调研阶段** |  | 50d | 2024-07-08 | 2024-09-13 |  |
| 33 | 2.5.1 | **硬件环境准备** |  | 50d | 2024-07-08 | 2024-09-13 |  |
| 34 | 2.5.1.1 | 定义环境需求 |  | 5d | 2024-07-08 | 2024-07-12 | 顾恒琪、顾浩 |
| 35 | 2.5.1.2 | 定义和分配团队系统访问权限 |  | 5d | 2024-07-08 | 2024-07-12 | 顾恒琪、顾浩 |
| 36 | 2.5.1.3 | 定义技术标准和流程 |  | 5d | 2024-07-08 | 2024-07-12 | 顾恒琪、顾浩 |
| 37 | 2.5.1.4 | 硬件蓝图设计文档编写 |  | 5d | 2024-07-08 | 2024-07-12 | 顾恒琪、顾浩 |
| 38 | 2.5.1.5 | 硬件环境准备 |  | 5d | 2024-08-26 | 2024-08-30 | 联友 |
| 39 | 2.5.1.6 | 测试、生产环境系统安装和部署 |  | 10d | 2024-09-02 | 2024-09-13 | 顾浩 |
| 40 | 2.6 | **业务现状初步沟通** |  | 15d | 2024-07-08 | 2024-07-26 |  |
| 41 | 2.6.1 | 现状问卷准备 |  | 2d | 2024-07-08 | 2024-07-09 | 顾恒琪、熊江红 |
| 42 | 2.6.2 | 集团现状业务沟通（含总部7个部门） |  | 3d | 2024-07-10 | 2024-07-12 | 顾恒琪、熊江红 |
| 43 | 2.6.3 | 重点二级单位现状业务沟通 |  | 5d | 2024-07-15 | 2024-07-19 | 顾恒琪、熊江红 |
| 44 | 2.6.4 | 集团现状业务沟通结果分析 |  | 5d | 2024-07-22 | 2024-07-26 | 顾恒琪、熊江红 |
| 45 | 2.7 | **业务需求调研** |  | 45d | 2024-07-29 | 2024-09-27 |  |
| 46 | 2.7.1 | 调研问卷准备 |  | 15d | 2024-07-29 | 2024-08-16 | 熊江红 |
| 47 | 2.7.2 | 调研问卷下发 |  | 1d | 2024-08-23 | 2024-08-23 | 熊江红 |
| 48 | 2.7.3 | 调研问卷回收 |  | 5d | 2024-08-26 | 2024-08-30 | 熊江红 |
| 49 | 2.7.4 | 调研问卷分析 |  | 5d | 2024-09-02 | 2024-09-06 | 熊江红 |
| 50 | 2.7.5 | 二级单位访谈 |  | 15d | 2024-09-09 | 2024-09-27 | 熊江红 |

| ID | WBS | Task | Type | Duration | Start | Finish | inPeople |
| --- | --- | --- | --- | --- | --- | --- | --- |
| 51 | 2.8 | **数据标准调研** |  | 40d | 2024-07-29 | 2024-09-20 |  |
| 52 | 2.8.1 | 制作数据字典收集模板 |  | 15d | 2024-07-29 | 2024-08-16 | 顾恒琪 |
| 53 | 2.8.2 | 数据字典收集模板下发 |  | 1d | 2024-08-23 | 2024-08-23 |  |
| 54 | 2.8.3 | 数据字典回收 |  | 5d | 2024-08-26 | 2024-08-30 |  |
| 55 | 2.8.4 | 组织用户统一平台访谈 |  | 5d | 2024-09-02 | 2024-09-06 |  |
| 56 | 2.8.5 | 其他关联系统访谈 |  | 10d | 2024-09-09 | 2024-09-20 |  |
| 57 | 3 | 系统蓝图阶段 |  | 61d | 2024-10-08 | 2024-12-31 |  |
| 58 | 4 | 系统实施阶段 |  | 150d | 2024-11-04 | 2025-05-30 |  |
| 59 | 5 | 系统上线阶段 | fixed end | 21d | 2025-06-02 | 2025-06-30 |  |
| 60 | 6 | 上线支持阶段 |  | 261d | 2025-07-01 | 2026-06-30 |  |
